# WBS Detallado

Schedule from MS Project, 2013-02-05 to 2013-06-06, A marks actual dates.

## Calendars

- Estándar: Mon-Fri 09:00-13:00, 15:00-19:00; Sat-Sun off. Exceptions (off unless hours are given): 2013-02-09 09:00-13:00, 15:00-19:00, 2013-02-16 09:00-13:00, 15:00-19:00, 2013-02-23 09:00-13:00, 15:00-19:00, 2013-03-09 09:00-13:00, 15:00-19:00, 2013-03-16 09:00-13:00, 15:00-19:00, 2013-03-23 09:00-13:00, 15:00-19:00, 2013-03-30 09:00-13:00, 15:00-19:00, 2013-04-14 09:00-13:00, 15:00-19:00, 2013-05-25 09:00-13:00, 15:00-19:00.

## Resources

| Resource |
| --- |
| Amira Lanao |
| Gino Guzman |
| Arnold Paico |
| Michel Aguilar |
| Manuel Saenz |

## Schedule

| ID | WBS | Task | Duration | Start | Finish | Predecessors | Complete | Remaining | Actual start | Total slack | Constraint | Resources | Work | Actual work | Text6 | Text7 |
| --- | --- | --- | --- | --- | --- | --- | --- | --- | --- | --- | --- | --- | --- | --- | --- | --- |
| 1 | 1 | **Sistema de Intranet de Alumnos - S.I.A** | 97d | 2013-02-05 A | 2013-06-06 |  | 18% | 79.78d |  |  |  |  | 1984h | 554.18h | 0% | 0% |
| 2 | 1.1 | **Iteracion 1** | 24d | 2013-02-05 A | 2013-03-05 |  | 15% | 20.42d |  |  |  |  | 696h | 178.18h | 0% | 0% |
| 3 | 1.1.1 | **Planificación** | 6d | 2013-02-05 A | 2013-02-11 |  | 5% | 5.69d |  |  |  | Amira Lanao | 360h | 72h | 0% | 0% |
| 4 | 1.1.1.1 | Plan de Proyecto | 4d | 2013-02-05 A | 2013-02-08 |  | 25% | 3d |  | 93d | finish no earlier than 2013-02-07 | Amira Lanao; Arnold Paico; Gino Guzman; Michel Aguilar | 128h | 32h | 100% | 100% |
| 5 | 1.1.1.2 | Cronograma Detallado | 2d | 2013-02-08 A | 2013-02-09 |  | 50% | 1d |  | 92d | finish no earlier than 2013-02-09 | Gino Guzman; Michel Aguilar | 32h | 16h | 100% | 100% |
| 6 | 1.1.1.3 | Metrica de Procentaje de Cumplimiento de Entregables | 1d | 2013-02-05 | 2013-02-05 |  |  |  |  | 5d |  |  |  |  |  |  |
| 7 | 1.1.1.4 | Actas de Reunion | 1d | 2013-02-08 A | 2013-02-08 |  |  | 1d |  | 93d | finish no earlier than 2013-02-08 | Arnold Paico | 8h |  | 100% | 100% |
| 8 | 1.1.1.5 | Informe Quincenal | 18d | 2013-02-05 A | 2013-02-25 |  |  | 18d |  | 79d | finish no earlier than 2013-02-25 | Arnold Paico | 144h |  | 100% | 100% |
| 9 | 1.1.1.6 | Informe Quincenal | 13d | 2013-02-26 | 2013-03-13 |  |  |  |  | 66d | start no earlier than 2013-02-26 |  |  |  |  |  |
| 10 | 1.1.2 | **Analisis de Riesgos** | 1d | 2013-02-09 A | 2013-02-09 A |  | 100% |  |  |  |  | Gino Guzman | 8h | 8h | 0% | 0% |
| 11 | 1.1.2.1 | Registro de Riesgos | 1d | 2013-02-09 A | 2013-02-09 A |  | 100% |  |  |  | finish no earlier than 2013-02-09 |  |  |  | 100% | 100% |
| 12 | 1.1.3 | **Ingeniería** | 12d | 2013-02-11 A | 2013-02-23 |  | 18% | 9.86d |  |  |  | Michel Aguilar | 280h | 66.18h | 0% | 0% |
| 13 | 1.1.3.1 | Modelaje Base de Datos | 6d | 2013-02-11 A | 2013-02-16 |  | 8% | 5.5d |  | 85d | finish no earlier than 2013-02-16 | Michel Aguilar; Arnold Paico | 56h | 8h | 100% | 100% |
| 14 | 1.1.3.2 | Desarrollo de Prototipos de Interfaces | 8d | 2013-02-15 A | 2013-02-23 |  | 25% | 6d |  | 79d | finish no earlier than 2013-02-23 | Gino Guzman; Michel Aguilar | 128h | 32h | 100% | 100% |
| 15 | 1.1.4 | **Evaluación del Cliente** | 2d | 2013-03-04 A | 2013-03-05 |  | 99% | 0d |  |  |  | Amira Lanao; Manuel Saenz | 48h | 32h | 0% | 0% |
| 16 | 1.1.4.1 | Kick Off Metting Interno | 1d | 2013-03-04 A | 2013-03-04 A |  | 100% |  |  |  | start no earlier than 2012-09-12 | Arnold Paico | 8h | 8h | 100% | 100% |
| 17 | 1.1.4.2 | Kick Off Metting Externo | 1d | 2013-03-05 A | 2013-03-05 A | 16 | 100% |  |  |  | finish no earlier than 2012-09-13 | Arnold Paico; Manuel Saenz | 8h | 8h | 100% | 100% |
| 18 | 1.1.4.3 | Acta de Aceptacion de Entregables | 1d | 2013-03-05 A | 2013-03-05 A | 17 | 100% |  |  |  | finish no earlier than 2013-02-21 | Arnold Paico; Manuel Saenz | 16h | 16h | 100% | 100% |
| 19 | 1.2 | **Iteracion 2** | 37d | 2013-03-06 | 2013-04-18 |  | 19% | 29.95d | 2013-02-13 |  |  |  | 1288h | 376h | 0% | 0% |
| 20 | 1.2.1 | **Planificación** | 27d | 2013-02-13 A | 2013-03-16 |  | 14% | 23.14d |  |  |  | Amira Lanao | 392h | 160h | 0% | 0% |
| 21 | 1.2.1.1 | Lista Maestra de Requerimientos | 4d | 2013-03-06 A | 2013-03-09 |  | 25% | 3d |  | 69d | finish no earlier than 2013-03-09 | Gino Guzman | 32h | 8h | 100% | 100% |
| 22 | 1.2.1.2 | Matriz de Trazabilidad | 1d | 2013-03-11 A | 2013-03-11 A | 21 | 100% |  |  |  | finish no earlier than 2012-09-16 | Gino Guzman | 8h | 8h | 100% | 100% |
| 23 | 1.2.1.3 | Casos de Uso | 1d | 2013-03-12 A | 2013-03-12 A |  | 100% |  |  |  | finish no earlier than 2012-09-15 | Michel Aguilar | 8h | 8h | 100% | 100% |
| 24 | 1.2.1.4 | Diagrama de Casos de Uso | 1d | 2013-02-13 A | 2013-02-13 A | 23 | 100% |  |  |  | finish no earlier than 2012-09-15 | Michel Aguilar | 8h | 8h | 100% | 100% |
| 25 | 1.2.1.5 | Metrica de Volatibilidad de Requerimientos | 2d | 2013-02-13 | 2013-02-14 |  |  |  |  | 88d | finish no earlier than 2013-02-14 |  |  |  |  |  |
| 26 | 1.2.1.6 | Acta de Reunion | 1d | 2013-03-15 A | 2013-03-15 A |  | 100% |  |  |  | finish no earlier than 2012-09-18 | Arnold Paico | 8h | 8h | 100% | 100% |
| 27 | 1.2.1.7 | Informe Quincenal | 14d | 2013-03-14 | 2013-03-29 |  |  |  |  | 52d | finish no earlier than 2013-03-29 | Arnold Paico | 112h |  | 100% | 100% |
| 28 | 1.2.1.8 | Informe Quincenal | 11d | 2013-04-01 | 2013-04-14 |  |  |  |  | 40d | finish no earlier than 2013-04-14 |  |  |  |  |  |

| ID | WBS | Task | Duration | Start | Finish | Predecessors | Complete | Remaining | Total slack | Constraint | Resources | Work | Actual work | Text6 | Text7 |
| --- | --- | --- | --- | --- | --- | --- | --- | --- | --- | --- | --- | --- | --- | --- | --- |
| 29 | 1.2.2 | **Análisis de Riesgos** | 1d | 2013-03-14 A | 2013-03-14 A |  | 100% |  |  |  | Gino Guzman | 16h | 16h | 0% | 0% |
| 30 | 1.2.2.1 | Registros de Riesgos | 1d | 2013-03-14 A | 2013-03-14 A |  | 100% |  |  | finish no earlier than 2012-09-20 | Gino Guzman; Michel Aguilar | 8h | 8h | 100% | 100% |
| 31 | 1.2.3 | **Ingeniería** | 27d | 2013-03-18 A | 2013-04-18 |  | 19% | 21.81d |  |  | Michel Aguilar | 832h | 168h | 0% | 0% |
| 32 | 1.2.3.1 | Desarrollo de Logica de Negocio | 26d | 2013-03-18 A | 2013-04-18 |  | 19% | 21d | 36d | finish no earlier than 2013-04-18 | Arnold Paico; Gino Guzman; Michel Aguilar | 624h | 120h | 100% | 100% |
| 33 | 1.2.4 | **Evaluación del Cliente** | 2d | 2013-03-25 A | 2013-03-26 |  | 99% | 0d |  |  | Amira Lanao; Manuel Saenz | 48h | 32h | 0% | 0% |
| 34 | 1.2.4.1 | Acta de Aceptacion de Entregables | 1d | 2013-03-26 A | 2013-03-26 A |  | 100% |  |  | finish no earlier than 2012-10-09 | Arnold Paico; Manuel Saenz | 16h | 16h | 100% | 100% |
| 35 | 1.3 | **Iteración 3** | 44d | 2013-03-27 A | 2013-05-23 |  | 11% | 39.26d |  |  |  |  |  | 0% | 0% |
| 36 | 1.3.1 | **Planificación** | 6d | 2013-03-27 A | 2013-04-02 |  |  | 6d |  |  |  |  |  | 0% | 0% |
| 37 | 1.3.1.1 | Herramienta de Gestión | 3d | 2013-03-27 | 2013-03-29 |  |  |  | 0d |  |  |  |  |  |  |
| 38 | 1.3.1.2 | Numero de no Conformidades (Metrica) | 1d | 2013-03-30 | 2013-03-30 | 37 |  |  | 0d | start no earlier than 2013-03-30 |  |  |  |  |  |
| 39 | 1.3.1.3 | Checklist de Aseguramiento de Calidad | 1d | 2013-04-01 | 2013-04-01 | 38 |  |  | 0d |  |  |  |  |  |  |
| 40 | 1.3.1.4 | Matriz de Seguimiento | 1d | 2013-04-02 | 2013-04-02 | 39 |  |  | 0d |  |  |  |  |  |  |
| 41 | 1.3.1.5 | Lista Maestra de Requerimientos Actualizada | 1d | 2013-03-28 A | 2013-03-28 |  |  | 1d | 53d | finish no earlier than 2013-03-27 |  |  |  | 100% | 100% |
| 42 | 1.3.1.6 | Acta de Reuniones | 1d | 2013-03-27 | 2013-03-27 |  |  |  | 5d |  |  |  |  |  |  |
| 43 | 1.3.1.7 | Informe Quincenal | 12d | 2013-04-15 | 2013-04-30 |  |  |  | 28d | start no earlier than 2013-04-15 |  |  |  |  |  |
| 44 | 1.3.1.8 | Informe Quincenal | 12d | 2013-05-01 | 2013-05-16 |  |  |  | 16d | finish no earlier than 2013-05-16 |  |  |  |  |  |
| 45 | 1.3.2 | **Análisis de Riesgos** | 3d | 2013-04-03 A | 2013-04-05 |  | 67% | 1d |  |  |  |  |  | 0% | 0% |
| 46 | 1.3.2.1 | Registros de Riesgos | 1d | 2013-04-03 A | 2013-04-03 A |  | 100% |  |  | finish no earlier than 2013-04-03 |  |  |  | 100% | 100% |
| 47 | 1.3.2.2 | Planes de Prueba | 2d | 2013-04-04 A | 2013-04-05 |  | 50% | 1d | 46d | finish no earlier than 2012-10-17 |  |  |  | 100% | 100% |
| 48 | 1.3.3 | **Ingeniería** | 36d | 2013-04-05 A | 2013-05-23 |  | 11% | 32.14d |  |  |  |  |  | 0% | 0% |
| 49 | 1.3.3.1 | Desarrollo de logica de negocio Ajustado | 25d | 2013-04-19 | 2013-05-23 |  |  |  | 11d | finish no earlier than 2013-05-23 |  |  |  |  |  |
| 50 | 1.3.3.2 | Desarrollo de Persistencia de Datos | 3d | 2013-04-05 A | 2013-04-09 A |  | 100% |  |  | finish no earlier than 2012-11-08 |  |  |  | 100% | 100% |
| 51 | 1.3.4 | **Evaluación del Cliente** | 1d | 2013-04-11 A | 2013-04-11 A |  | 100% |  |  |  |  |  |  | 0% | 0% |
| 52 | 1.3.4.1 | Acta de Aceptacion de Entregables | 1d | 2013-04-11 A | 2013-04-11 A |  | 100% |  |  | finish no earlier than 2012-11-09 |  |  |  | 0% | 100% |
| 53 | 1.3.4.2 | Pruebas Funcionales | 1d | 2013-04-11 A | 2013-04-11 A |  | 100% |  |  | finish no earlier than 2012-11-13 |  |  |  | 50 | 100% |

| ID | WBS | Task | Type | Duration | Start | Finish | Predecessors | Complete | Remaining | Total slack | Constraint | Text6 | Text7 |
| --- | --- | --- | --- | --- | --- | --- | --- | --- | --- | --- | --- | --- | --- |
| 54 | 1.4 | **Iteración 4** |  | 11d | 2013-05-24 A | 2013-06-06 |  | 53% | 5.13d |  |  | 0% | 0% |
| 55 | 1.4.1 | **Planificación** |  | 5d | 2013-05-24 A | 2013-05-29 |  | 75% | 1.25d |  |  | 0% | 0% |
| 56 | 1.4.1.1 | Métricas de Calidad |  | 1d | 2013-05-24 | 2013-05-24 |  |  |  | 4d |  |  |  |
| 57 | 1.4.1.2 | Manual de Usuario |  | 1d | 2013-05-27 A | 2013-05-27 A | 56 | 100% |  |  | finish no earlier than 2012-11-15 | 100% | 100% |
| 58 | 1.4.1.3 | Actas de Reuniones |  | 1d | 2013-05-28 A | 2013-05-28 A |  | 100% |  |  | finish no earlier than 2012-11-16 | 100% | 100% |
| 59 | 1.4.1.4 | Informe Quincenal |  | 1d | 2013-05-29 A | 2013-05-29 A | 58 | 100% |  |  | finish no earlier than 2012-11-15 | 100% | 100% |
| 60 | 1.4.2 | **Análisis de Riesgos** |  | 3d | 2013-05-25 A | 2013-05-28 A |  | 100% |  |  |  | 0% | 0% |
| 61 | 1.4.2.1 | Registro de Riesgos |  | 1d | 2013-05-25 A | 2013-05-25 A |  | 100% |  |  | start no earlier than 2012-11-19 | 100% | 100% |
| 62 | 1.4.2.2 | Plan de Capacitación |  | 2d | 2013-05-27 A | 2013-05-28 A |  | 100% |  |  | finish no earlier than 2012-11-23 | 100% | 100% |
| 63 | 1.4.3 | **Ingeniería** |  | 5d | 2013-05-30 A | 2013-06-05 |  | 33% | 3.33d |  |  |  |  |
| 64 | 1.4.3.1 | Pruebas Unitarias |  | 1d | 2013-05-30 A | 2013-05-30 A |  | 100% |  |  | finish no earlier than 2012-11-30 | 100% | 100% |
| 65 | 1.4.3.2 | Pruebas Integrales | manual | 1d | 2013-05-31 A | 2013-05-31 |  |  | 1d |  | finish no earlier than 2012-12-05 | 100% | 100% |
| 66 | 1.4.3.3 | Pruebas en Producción | manual | 2d | 2013-06-01 A | 2013-06-03 |  |  | 2d |  | finish no earlier than 2013-06-03 | 100% | 100% |
| 67 | 1.4.3.4 | Implementación | manual | 2d | 2013-06-04 A | 2013-06-05 |  | 50% | 1d |  | start no earlier than 2013-06-04 | 100% | 100% |
| 68 | 1.4.4 | **Evaluación del Cliente** |  | 1d | 2013-06-06 | 2013-06-06 |  |  |  |  |  | 0% | 0% |
| 69 | 1.4.4.1 | Acta de Conformidad de Capacitacion |  | 1d | 2013-06-06 | 2013-06-06 |  |  |  | 0d | start no earlier than 2013-06-06 | 100% | 100% |
| 70 | 1.4.4.2 | Acta de Finalización del Proyecto |  | 1d | 2013-06-06 | 2013-06-06 |  |  |  | 0d | start no earlier than 2013-06-06 | 0% | 100% |
